# Database project plan revised

How a schedule from MS Project changed from version to version. A marks actual dates.

## Version 1 (saved 2024-02-26)

Note of the change: without error

| ID | Task | Duration | Start | Finish | Predecessors | Complete | Total float |
| --- | --- | --- | --- | --- | --- | --- | --- |
| 1 | Project introduction to incoming student | 1d | 2023-12-21 A | 2023-12-21 A |  | 100% |  |
| 2 | Explanation of goal and things acchieved | 2d | 2024-01-02 A | 2024-01-03 A |  | 100% |  |
| 3 | Read documentation | 1d | 2024-01-02 A | 2024-01-02 A |  | 100% |  |
| 4 | Set up web app files | 1d | 2024-01-04 A | 2024-01-04 A | 2 | 100% |  |
| 5 | Set up connection to database and GitHub | 1d | 2024-01-04 A | 2024-01-04 A | 2 | 100% |  |
| 7 | Code Web Pages | 1d? | 2024-02-26 | 2024-02-26 |  |  |  |
| 8 | Web page type 1 | 10d | 2024-01-15 A | 2024-01-26 A |  | 100% |  |
| 9 | Type 1 demo to team | 1d | 2024-01-29 A | 2024-01-29 A | 8 | 100% |  |
| 10 | Type 1 demo to IT | 1d | 2024-01-29 | 2024-01-29 | 8 |  |  |
| 12 | Program page | 2d | 2024-01-30 A | 2024-01-31 A | 9 | 100% |  |
| 13 | Product page | 2d | 2024-02-01 A | 2024-02-02 A | 12 | 100% |  |
| 15 | Tests page | 10d | 2024-02-03 A | 2024-02-16 | 13 | 90% | 0d |
| 16 | Tests page demo | 1d | 2024-02-19 | 2024-02-19 | 15 |  | 51d |
| 18 | Chamber Log page | 10d | 2024-02-05 A | 2024-02-21 | 15 | 70% | 0d |
| 19 | Chamber Log page demo | 1d | 2024-02-22 | 2024-02-22 | 18 |  | 48d |
| 21 | DUT history page | 10d | 2024-02-22 | 2024-03-06 | 18 |  | 0d |
| 22 | DUT history page demo | 1d | 2024-03-07 | 2024-03-07 | 21 |  | 38d |
| 24 | Program Information page | 10d | 2024-03-07 | 2024-03-20 | 21 |  | 0d |
| 25 | Program Information page demo | 1d | 2024-03-21 | 2024-03-21 | 24 |  | 28d |
| 27 | Testmap page | 1d | 2024-03-21 | 2024-03-21 | 24 |  | 0d |
| 28 | Lab page | 1d | 2024-03-22 | 2024-03-22 | 27 |  | 0d |
| 29 | Skill page | 1d | 2024-03-25 | 2024-03-25 | 28 |  | 0d |
| 30 | Technician page | 1d | 2024-03-26 | 2024-03-26 | 29 |  | 0d |
| 31 | Fluid page | 1d | 2024-03-27 | 2024-03-27 | 30 |  | 0d |
| 32 | DUT page | 1d | 2024-03-28 | 2024-03-28 | 31 |  | 0d |
| 33 | Harness page | 1d | 2024-03-29 | 2024-03-29 | 32 |  | 0d |
| 34 | DAR page | 1d | 2024-04-01 | 2024-04-01 | 33 |  | 0d |
| 35 | Chamber page | 1d | 2024-04-02 | 2024-04-02 | 34 |  | 0d |
| 36 | Cage page | 1d | 2024-04-03 | 2024-04-03 | 35 |  | 0d |
| 37 | Laptop page | 1d | 2024-04-04 | 2024-04-04 | 36 |  | 0d |
| 38 | Test type page | 1d | 2024-04-05 | 2024-04-05 | 37 |  | 0d |
| 39 | Program fluid page | 1d | 2024-04-08 | 2024-04-08 | 38 |  | 0d |
| 40 | Program DAR page | 1d | 2024-04-09 | 2024-04-09 | 39 |  | 0d |
| 41 | Program cage page | 1d | 2024-04-10 | 2024-04-10 | 40 |  | 0d |
| 42 | DAR laptop page | 1d | 2024-04-11 | 2024-04-11 | 41 |  | 0d |
| 43 | Test chamber page | 1d | 2024-04-12 | 2024-04-12 | 42 |  | 0d |
| 44 | Test-DUT page | 1d | 2024-04-15 | 2024-04-15 | 43 |  | 0d |
| 45 | Test-Harnesses page | 1d | 2024-04-16 | 2024-04-16 | 44 |  | 0d |
| 47 | Create Menu | 1d | 2024-04-17 | 2024-04-17 | 45 |  | 0d |
| 49 | Add User Types | 3d | 2024-04-18 | 2024-04-22 | 47 |  | 0d |
| 51 | Add Login | 3d | 2024-04-23 | 2024-04-25 | 49 |  | 0d |
| 53 | Deploy Azure Database | 3d | 2024-04-26 | 2024-04-30 | 51 |  | 0d |
| 55 | Deploy Web App | 3d | 2024-04-26 | 2024-04-30 | 51 |  | 0d |

## Version 2 (saved 2024-03-14)

Note of the change: hours calculation - not yet tested

Last finish 2024-04-30 → 2024-06-28 (+59d).

Added:

| ID | Task | Duration | Start | Finish | Predecessors | Constraint |
| --- | --- | --- | --- | --- | --- | --- |
| 1 | **Database project** | 137d | 2023-12-21 A | 2024-06-28 |  |  |
| 20 | Equipment/ program hour calculation | 14d | 2024-02-27 A | 2024-03-15 |  | finish no earlier than 2024-03-15 |
| 51 | Create database | 3d | 2024-04-03 | 2024-04-05 | 50 |  |
| 52 | Test Run (programmers) | 5d | 2024-04-08 | 2024-04-12 | 51 |  |
| 53 | Meet with IT to deploy App | 1d | 2024-03-11 A | 2024-03-11 |  |  |
| 56 | Test Run (all key users) | 10d | 2024-04-22 | 2024-05-03 | 54 |  |
| 58 | Data migration | 15d | 2024-05-06 | 2024-05-24 | 56 |  |
| 60 | Training | 5d | 2024-05-27 | 2024-05-31 | 58 |  |
| 62 | Trial Period | 20d | 2024-06-03 | 2024-06-28 | 60 |  |

Removed: 10 Type 1 demo to IT

Changed:

| ID | Task | Start | Finish | Duration | Complete | Total float | Predecessors | Other |
| --- | --- | --- | --- | --- | --- | --- | --- | --- |
| 8 | **Code Web Pages** | 2024-02-26 → 2024-01-15 A (-42d) | 2024-02-26 → 2024-01-29 A (-28d) | 1d? → 11d | 0% → 100% |  |  |  |
| 15 | Tests page |  | 2024-02-16 → 2024-03-06 (+19d) | 10d → 24d | 90% → 95% | 0d → none |  |  |
| 16 | Tests page demo | 2024-02-19 → 2024-03-07 A (+17d) | 2024-02-19 → 2024-03-07 (+17d) |  | 0% → 95% | 51d → 81d |  |  |
| 18 | Chamber Log page |  | 2024-02-21 → 2024-03-12 (+20d) | 10d → 19d | 70% → 80% | 0d → 0.7d | 15 → 13 | constraint none → finish no earlier than 2024-03-12 |
| 19 | Chamber Log page demo | 2024-02-22 → 2024-03-11 A (+18d) | 2024-02-22 → 2024-03-14 (+21d) | 1d → 2d | 0% → 80% | 48d → 76.9d |  | constraint none → finish no earlier than 2024-03-13 |
| 22 | DUT history page | 2024-02-22 → 2024-03-13 A (+20d) | 2024-03-06 → 2024-03-19 (+13d) | 10d → 5d | 0% → 50% | 0d → 0.5d |  |  |
| 23 | DUT history page demo | 2024-03-07 → 2024-03-20 A (+13d) | 2024-03-07 → 2024-03-20 (+13d) |  | 0% → 50% | 38d → 72d |  |  |
| 25 | Program Information page | 2024-03-07 → 2024-03-11 A (+4d) | 2024-03-20 → 2024-03-15 (-5d) | 10d → 5d | 0% → 65% |  | 22 → 19SS |  |
| 26 | Program Information page demo | 2024-03-21 → 2024-03-18 A (-3d) | 2024-03-21 → 2024-03-18 (-3d) |  | 0% → 65% | 28d → 74d |  |  |
| 28 | Testmap page | 2024-03-21 → 2024-03-18 (-3d) | 2024-03-21 → 2024-03-22 (+1d) | 1d → 5d |  | 0d → 70d |  |  |
| 29 | Lab page | 2024-03-22 → 2024-03-18 (-4d) |  | 1d → 5d |  | 0d → 70d | 28 → 25 |  |
| 30 | Skill page | 2024-03-25 → 2024-03-18 (-7d) | 2024-03-25 → 2024-03-22 (-3d) | 1d → 5d |  | 0d → 70d | 29 → 25 |  |
| 31 | Technician page | 2024-03-26 → 2024-03-18 (-8d) | 2024-03-26 → 2024-03-22 (-4d) | 1d → 5d |  | 0d → 70d | 30 → 25 |  |
| 32 | Fluid page | 2024-03-27 → 2024-03-18 (-9d) | 2024-03-27 → 2024-03-22 (-5d) | 1d → 5d |  | 0d → 70d | 31 → 25 |  |
| 33 | DUT page | 2024-03-28 → 2024-03-18 (-10d) | 2024-03-28 → 2024-03-22 (-6d) | 1d → 5d |  | 0d → 70d | 32 → 25 |  |
| 34 | Harness page | 2024-03-29 → 2024-03-18 (-11d) | 2024-03-29 → 2024-03-22 (-7d) | 1d → 5d |  | 0d → 70d | 33 → 25 |  |
| 35 | DAR page | 2024-04-01 → 2024-03-18 (-14d) | 2024-04-01 → 2024-03-22 (-10d) | 1d → 5d |  | 0d → 70d | 34 → 25 |  |
| 36 | Chamber page | 2024-04-02 → 2024-03-18 (-15d) | 2024-04-02 → 2024-03-22 (-11d) | 1d → 5d |  | 0d → 70d | 35 → 25 |  |
| 37 | Cage page | 2024-04-03 → 2024-03-18 (-16d) | 2024-04-03 → 2024-03-22 (-12d) | 1d → 5d |  | 0d → 70d | 36 → 25 |  |
| 38 | Laptop page | 2024-04-04 → 2024-03-18 (-17d) | 2024-04-04 → 2024-03-22 (-13d) | 1d → 5d |  | 0d → 70d | 37 → 25 |  |
| 39 | Test type page | 2024-04-05 → 2024-03-18 (-18d) | 2024-04-05 → 2024-03-22 (-14d) | 1d → 5d |  | 0d → 70d | 38 → 25 |  |
| 40 | Program fluid page | 2024-04-08 → 2024-03-18 (-21d) | 2024-04-08 → 2024-03-22 (-17d) | 1d → 5d |  | 0d → 70d | 39 → 25 |  |
| 41 | Program DAR page | 2024-04-09 → 2024-03-18 (-22d) | 2024-04-09 → 2024-03-22 (-18d) | 1d → 5d |  | 0d → 70d | 40 → 25 |  |
| 42 | Program cage page | 2024-04-10 → 2024-03-18 (-23d) | 2024-04-10 → 2024-03-22 (-19d) | 1d → 5d |  | 0d → 70d | 41 → 25 |  |
| 43 | DAR laptop page | 2024-04-11 → 2024-03-18 (-24d) | 2024-04-11 → 2024-03-22 (-20d) | 1d → 5d |  | 0d → 70d | 42 → 25 |  |
| 44 | Test chamber page | 2024-04-12 → 2024-03-18 (-25d) | 2024-04-12 → 2024-03-22 (-21d) | 1d → 5d |  | 0d → 70d | 43 → 25 |  |
| 45 | Test-DUT page | 2024-04-15 → 2024-03-18 (-28d) | 2024-04-15 → 2024-03-22 (-24d) | 1d → 5d |  | 0d → 70d | 44 → 25 |  |
| 46 | Test-Harnesses page | 2024-04-16 → 2024-03-18 (-29d) | 2024-04-16 → 2024-03-22 (-25d) | 1d → 5d |  | 0d → 70d | 45 → 25 |  |
| 48 | Create Menu | 2024-04-17 → 2024-03-18 (-30d) | 2024-04-17 → 2024-03-19 (-29d) | 1d → 2d |  |  | 46 → 25 |  |
| 49 | Add Login | 2024-04-23 → 2024-03-20 (-34d) | 2024-04-25 → 2024-03-26 (-30d) | 3d → 5d |  |  | 50 → 48 |  |
| 50 | Add User Types | 2024-04-18 → 2024-03-27 (-22d) | 2024-04-22 → 2024-04-02 (-20d) | 3d → 5d |  |  | 48 → 49 |  |
| 54 | Deploy Web App | 2024-04-26 → 2024-04-15 (-11d) | 2024-04-30 → 2024-04-19 (-11d) | 3d → 5d |  |  | 49 → 52 |  |
| 55 | Deploy Azure Database | 2024-04-26 → 2024-04-15 (-11d) | 2024-04-30 → 2024-04-19 (-11d) | 3d → 5d |  | 0d → 50d | 49 → 52 |  |

## Version 3 (saved 2024-03-28)

Note of the change: revised equipment hours calculation

Last finish 2024-06-28 → 2024-07-09 (+11d). Complete tasks 9 → 32.

Added:

| ID | Task | Duration | Start | Finish |
| --- | --- | --- | --- | --- |
| 59 | Historical Data migration | 1d? | 2023-12-21 | 2023-12-21 |

Changed:

| ID | Task | Start | Finish | Duration | Complete | Total float | Predecessors | Other |
| --- | --- | --- | --- | --- | --- | --- | --- | --- |
| 1 | **Database project** |  | 2024-06-28 → 2024-07-09 (+11d) | 137d → 144d | 30% → 71% |  |  |  |
| 18 | Chamber Log page |  |  |  | 80% → 90% | 0.7d → 0.9d |  |  |
| 19 | Chamber Log page demo |  |  |  | 80% → 90% | 76.9d → 83.9d |  |  |
| 20 | Equipment/ program hour calculation |  | 2024-03-15 A |  | 90% → 100% | 75d → none |  |  |
| 22 | DUT history page |  | 2024-03-19 → 2024-03-26 A (+7d) | 5d → 10d | 50% → 100% | 0.5d → none |  |  |
| 23 | DUT history page demo |  | 2024-03-20 → 2024-03-27 A (+7d) |  | 50% → 100% | 72d → none |  |  |
| 25 | Program Information page |  | 2024-03-15 A |  | 65% → 100% | 0d → none |  |  |
| 26 | Program Information page demo |  | 2024-03-18 A |  | 65% → 100% | 74d → none |  |  |
| 28 | Testmap page | 2024-03-18 A | 2024-03-22 → 2024-03-26 A (+4d) | 5d → 7d | 0% → 100% | 70d → none |  |  |
| 29 | Lab page | 2024-03-18 A | 2024-03-22 → 2024-03-26 A (+4d) | 5d → 7d | 0% → 100% | 70d → none |  |  |
| 30 | Skill page | 2024-03-18 A | 2024-03-22 → 2024-03-26 A (+4d) | 5d → 7d | 0% → 100% | 70d → none |  |  |
| 31 | Technician page | 2024-03-18 A | 2024-03-22 → 2024-03-26 A (+4d) | 5d → 7d | 0% → 100% | 70d → none |  |  |
| 32 | Fluid page | 2024-03-18 A | 2024-03-22 → 2024-03-26 A (+4d) | 5d → 7d | 0% → 100% | 70d → none |  |  |
| 33 | DUT page |  | 2024-03-22 → 2024-03-26 (+4d) | 5d → 7d |  | 70d → 75d |  |  |
| 34 | Harness page | 2024-03-18 A | 2024-03-22 → 2024-03-26 A (+4d) | 5d → 7d | 0% → 100% | 70d → none |  |  |
| 35 | DAR page | 2024-03-18 A | 2024-03-22 → 2024-03-26 A (+4d) | 5d → 7d | 0% → 100% | 70d → none |  |  |
| 36 | Chamber page | 2024-03-18 A | 2024-03-22 → 2024-03-26 A (+4d) | 5d → 7d | 0% → 100% | 70d → none |  |  |
| 37 | Cage page | 2024-03-18 A | 2024-03-22 → 2024-03-26 A (+4d) | 5d → 7d | 0% → 100% | 70d → none |  |  |
| 38 | Laptop page | 2024-03-18 A | 2024-03-22 → 2024-03-26 A (+4d) | 5d → 7d | 0% → 100% | 70d → none |  |  |
| 39 | Test type page | 2024-03-18 A | 2024-03-22 → 2024-03-26 A (+4d) | 5d → 7d | 0% → 100% | 70d → none |  |  |
| 40 | Program fluid page | 2024-03-18 A | 2024-03-22 → 2024-03-26 A (+4d) | 5d → 7d | 0% → 100% | 70d → none |  |  |
| 41 | Program DAR page | 2024-03-18 A | 2024-03-22 → 2024-03-26 A (+4d) | 5d → 7d | 0% → 100% | 70d → none |  |  |
| 42 | Program cage page | 2024-03-18 A | 2024-03-22 → 2024-03-26 A (+4d) | 5d → 7d | 0% → 100% | 70d → none |  |  |
| 43 | DAR laptop page | 2024-03-18 A | 2024-03-22 → 2024-03-26 A (+4d) | 5d → 7d | 0% → 100% | 70d → none |  |  |
| 44 | Test chamber page | 2024-03-18 A | 2024-03-22 → 2024-03-26 A (+4d) | 5d → 7d | 0% → 100% | 70d → none |  |  |
| 45 | Test-DUT page | 2024-03-18 A | 2024-03-22 → 2024-03-26 A (+4d) | 5d → 7d | 0% → 100% | 70d → none |  |  |
| 46 | Test-Harnesses page | 2024-03-18 A | 2024-03-22 → 2024-03-26 A (+4d) | 5d → 7d | 0% → 100% | 70d → none |  |  |
| 48 | Create Menu | 2024-03-18 → 2024-03-27 (+9d) | 2024-03-19 → 2024-03-28 (+9d) |  |  |  | 25 → none | constraint none → start no earlier than 2024-03-27 |
| 49 | Add Login | 2024-03-20 → 2024-03-29 (+9d) | 2024-03-26 → 2024-04-04 (+9d) |  |  |  |  |  |
| 50 | Add User Types | 2024-03-27 → 2024-04-05 (+9d) | 2024-04-02 → 2024-04-11 (+9d) |  |  |  |  |  |
| 51 | Create database | 2024-04-03 → 2024-04-12 (+9d) | 2024-04-05 → 2024-04-16 (+11d) |  |  | none → 0d |  |  |
| 52 | Test Run (programmers) | 2024-04-08 → 2024-04-17 (+9d) | 2024-04-12 → 2024-04-23 (+11d) |  |  |  |  |  |
| 54 | Deploy Web App | 2024-04-15 → 2024-04-24 (+9d) | 2024-04-19 → 2024-04-30 (+11d) |  |  |  |  |  |
| 55 | Deploy Azure Database | 2024-04-15 → 2024-04-24 (+9d) | 2024-04-19 → 2024-04-30 (+11d) |  |  |  |  |  |
| 56 | Test Run (all key users) | 2024-04-22 → 2024-05-01 (+9d) | 2024-05-03 → 2024-05-14 (+11d) |  |  |  |  |  |
| 58 | Data migration | 2024-05-06 → 2024-05-15 (+9d) | 2024-05-24 → 2024-06-04 (+11d) |  |  |  |  |  |
| 60 | Training | 2024-05-27 → 2024-06-05 (+9d) | 2024-05-31 → 2024-06-11 (+11d) |  |  |  |  |  |
| 62 | Trial Period | 2024-06-03 → 2024-06-12 (+9d) | 2024-06-28 → 2024-07-09 (+11d) |  |  |  |  |  |
